# Stargazer

Schedule from MS Project, 2010-01-06 to 2010-04-07, 4 hours a day, A marks actual dates.
Okanagan College

## Calendars

- Standard: Mon 14:00-16:30; Tue off; Wed 14:30-16:30; Thu 14:30-18:30; Fri-Sun off. Exceptions (off unless hours are given): 2010-04-06 08:00-12:00, 13:00-17:00.

## Resources

| Resource |
| --- |
| Robert |
| Rob |

## Schedule

| ID | WBS | Task | Type | Duration | Start | Finish | Predecessors | Complete | Remaining | Total slack | Free slack | Constraint | Resources | Work | Actual work | Text1 |
| --- | --- | --- | --- | --- | --- | --- | --- | --- | --- | --- | --- | --- | --- | --- | --- | --- |
| 1 | 1 | **Iteration 5: Release #3** |  | 6.88d? | 2010-01-06 14:30 A | 2010-01-28 08:00 |  | 5% | 6.55d? | 12.5d | 0d |  |  | 39.25h | 1.75h | 16 |
| 2 | 1.1 | **Web system** |  | 5d? | 2010-01-07 14:30 A | 2010-01-21 17:30 |  | 7% | 4.66d? | 13.88d | 1.38d |  |  | 25.75h | 1.75h | 16 |
| 3 | 1.1.1 | Add new online help documentation to website |  | 3h | 2010-01-11 14:00 | 2010-01-13 15:00 |  |  |  | 17.12d |  | start no earlier than 2010-01-11 08:00 | Robert | 3h |  | 12 |
| 4 | 1.1.2 | Fix CSS with mobile devices |  | 15min | 2010-01-07 14:30 A | 2010-01-07 14:45 A |  | 100% |  |  |  | start no earlier than 2010-01-07 08:00 | Rob | 0.25h | 0.25h |  |
| 5 | 1.1.3 | Minor refactoring |  | 1.5h | 2010-01-07 14:30 A | 2010-01-07 16:00 A |  | 100% |  |  |  | start no earlier than 2010-01-07 08:00 | Rob | 1.5h | 1.5h |  |
| 6 | 1.1.4 | Integrate libraries (which have celestial objects of interest) to web site |  | 5h | 2010-01-14 14:30 | 2010-01-18 15:00 | 5 |  |  | 15.5d |  | start no earlier than 2010-01-14 08:00 | Robert | 5h |  | 20 |
| 7 | 1.1.5 | Research Rails plugin to handle scheduling |  | 2h | 2010-01-11 14:00 | 2010-01-11 16:00 |  |  |  | 13.88d | 0d | start no earlier than 2010-01-11 08:00 | Rob | 2h |  |  |
| 8 | 1.1.6 | Implementation to handle scheduling of scripts |  | 2.5h | 2010-01-11 16:00 | 2010-01-13 16:30 | 7 |  |  | 13.88d | 0d |  | Rob | 2.5h |  | 10 |
| 9 | 1.1.7 | Download and install Oracle 10g XE on telescope server |  | 1.5h | 2010-01-14 14:30 | 2010-01-14 16:00 | 8 |  |  | 13.88d | 0d |  | Rob | 1.5h |  |  |
| 10 | 1.1.8 | Install Oracle client on web server |  | 1d? | 2010-01-14 16:00 | 2010-01-18 15:30 | 9 |  |  | 13.88d | 0d |  | Rob | 4h |  | 16 |
| 11 | 1.1.9 | Configure Rails environment to now use the Oracle 10g XE database |  | 1d? | 2010-01-18 15:30 | 2010-01-21 15:30 | 10, 9 |  |  | 13.88d | 0d |  | Rob | 4h |  | 16 |
| 12 | 1.1.10 | Create triggers/batch file to run application |  | 2h | 2010-01-21 15:30 | 2010-01-21 17:30 | 11 |  |  | 13.88d |  | start no earlier than 2010-01-11 08:00 | Rob | 2h |  |  |
| 13 | 1.2 | **Telescope-controlling application** |  | 0.75d | 2010-01-13 14:30 | 2010-01-14 15:30 |  |  |  | 16.5d | 4d |  |  | 3h |  | 16 |
| 14 | 1.2.1 | Allow for parking the telescope |  | 1h | 2010-01-13 14:30 | 2010-01-13 15:30 |  |  |  | 16.5d | 0d | start no earlier than 2010-01-13 08:00 | Robert | 1h |  |  |
| 15 | 1.2.2 | Allow for telescope movement ability from entered celestial coordinates |  | 2h | 2010-01-13 15:30 | 2010-01-14 15:30 | 14 |  |  | 16.5d |  | start no earlier than 2010-01-13 08:00 | Robert | 2h |  |  |
| 16 | 1.3 | **Documentation** |  | 3.38d | 2010-01-06 14:30 | 2010-01-14 17:30 |  |  |  | 16d | 3.5d |  |  | 10.5h |  | 16 |
| 17 | 1.3.1 | Documentation updates |  | 2h | 2010-01-06 14:30 | 2010-01-06 16:30 |  |  |  | 18.12d | 2.12d |  | Rob; Robert | 4h |  |  |
| 18 | 1.3.2 | Draft acceptance test |  | 1h | 2010-01-14 14:30 | 2010-01-14 15:30 |  |  |  | 16.5d |  | start no earlier than 2010-01-14 08:00 | Rob | 1h |  |  |
| 19 | 1.3.3 | Create unit tests for telescope-controlling application |  | 2.5h | 2010-01-06 14:30 | 2010-01-07 15:00 |  |  |  | 18.75d |  |  | Robert | 2.5h |  | 10 |
| 20 | 1.3.4 | Create class diagram for telescope-controlling application |  | 1h | 2010-01-14 14:30 | 2010-01-14 15:30 | 17 |  |  | 16d | 0d | start no earlier than 2010-01-14 08:00 | Robert | 1h |  |  |
| 21 | 1.3.5 | Create sequence diagrams for telescope-controlling application |  | 2h | 2010-01-14 15:30 | 2010-01-14 17:30 | 20 |  |  | 16d |  | start no earlier than 2010-01-14 08:00 | Robert | 2h |  |  |
| 22 | 1.4 | Release #3 | milestone | 0d | 2010-01-28 08:00 | 2010-01-28 08:00 | 2, 13, 16 |  |  | 12.5d |  | start no earlier than 2010-01-28 08:00 | Rob; Robert |  |  |  |
| 24 | 2 | **Iteration 6: Release #4** |  | 4d | 2010-01-28 14:30 | 2010-02-10 15:30 | 1 |  |  | 12.5d | 0d |  |  | 46.5h |  | 16 |
| 25 | 2.1 | **Web system** |  | 0.88d | 2010-01-28 14:30 | 2010-01-28 18:00 |  |  |  | 15.62d | 3.12d |  |  | 10h |  | 16 |
| 26 | 2.1.1 | Implement mail server/mailing system |  | 3.5h | 2010-01-28 14:30 | 2010-01-28 18:00 |  |  |  | 15.62d |  |  | Rob | 3.5h |  | 14 |
| 27 | 2.1.2 | Add pagination to tables (e.g. schedule log table) |  | 2.5h | 2010-01-28 14:30 | 2010-01-28 17:00 |  |  |  | 15.88d |  |  | Rob | 2.5h |  | 10 |
| 28 | 2.1.3 | Changes to schedule log filtering for mobile device views |  | 1h | 2010-01-28 14:30 | 2010-01-28 15:30 |  |  |  | 16.25d |  |  | Rob | 1h |  |  |
| 29 | 2.1.4 | Fix functional tests |  | 3h | 2010-01-28 14:30 | 2010-01-28 17:30 |  |  |  | 15.75d |  | start no earlier than 2010-01-07 08:00 | Rob | 3h |  | 12 |

| ID | WBS | Task | Type | Duration | Start | Finish | Predecessors | Total slack | Free slack | Constraint | Resources | Work | Text1 |
| --- | --- | --- | --- | --- | --- | --- | --- | --- | --- | --- | --- | --- | --- |
| 30 | 2.2 | **Telescope-controlling application** |  | 1.12d | 2010-01-28 14:30 | 2010-02-01 14:30 |  | 15.38d | 2.88d |  |  | 4.5h | 16 |
| 31 | 2.2.1 | Integrate camera to telescope-controlling application |  | 4.5h | 2010-01-28 14:30 | 2010-02-01 14:30 |  | 15.38d | 2.88d |  | Robert | 4.5h | 18 |
| 32 | 2.3 | **Documentation** |  | 4d | 2010-01-28 14:30 | 2010-02-10 15:30 |  | 12.5d | 0d |  |  | 32h | 16 |
| 33 | 2.3.1 | Update documentation |  | 16h | 2010-01-28 14:30 | 2010-02-10 15:30 |  | 12.5d |  |  | Rob; Robert | 32h | 64 |
| 34 | 2.4 | Release #4 | milestone | 0d | 2010-02-10 15:30 | 2010-02-10 15:30 | 25, 30, 32 | 12.5d |  | start no earlier than 2010-02-10 08:00 | Rob; Robert |  |  |
| 36 | 3 | **Iteration 7: Release #5** |  | 2.38d | 2010-02-10 15:30 | 2010-02-17 16:30 | 24 | 12.5d | 0d |  |  | 34h | 16 |
| 37 | 3.1 | **Web system** |  | 0.88d | 2010-02-15 15:00 | 2010-02-17 16:30 |  | 12.5d | 0d |  |  | 3.5h | 16 |
| 38 | 3.1.1 | Implement manual telescope positioning |  | 3.5h | 2010-02-15 15:00 | 2010-02-17 16:30 | 42 | 12.5d |  |  | Rob | 3.5h | 14 |
| 39 | 3.2 | **Telescope-controlling application** |  | 2.25d | 2010-02-10 15:30 | 2010-02-17 16:00 |  | 12.5d | 0.12d |  |  | 22.5h | 16 |
| 40 | 3.2.1 | Research image recognition options |  | 3h | 2010-02-10 15:30 | 2010-02-11 16:30 |  | 12.62d | 0d |  | Rob; Robert | 6h | 12 |
| 41 | 3.2.2 | Implement functionality for compiling composite images |  | 4.5h | 2010-02-10 15:30 | 2010-02-11 18:00 | 31 | 13.75d |  |  | Robert | 4.5h | 18 |
| 42 | 3.2.3 | Implement ability for streaming images live to the web system |  | 6h | 2010-02-10 15:30 | 2010-02-15 15:00 | 31 | 12.5d | 0d |  | Rob | 6h | 24 |
| 43 | 3.2.4 | Implement functionality for image recognition |  | 6h | 2010-02-11 16:30 | 2010-02-17 16:00 | 40 | 12.62d |  |  | Robert | 6h | 24 |
| 44 | 3.3 | **Documentation** |  | 1d | 2010-02-10 15:30 | 2010-02-11 17:30 |  | 13.88d | 1.38d |  |  | 8h | 16 |
| 45 | 3.3.1 | Update documentation |  | 4h | 2010-02-10 15:30 | 2010-02-11 17:30 |  | 13.88d |  |  | Rob; Robert | 8h | 16 |
| 46 | 3.4 | Release #5 | milestone | 0d | 2010-02-17 16:30 | 2010-02-17 16:30 | 37, 39, 44 | 12.5d |  |  | Rob; Robert |  |  |
| 48 | 4 | **Iteration 8: Release #6** |  | 16.38d | 2010-02-18 14:30 | 2010-04-07 08:00 | 36 | 0d |  |  |  | 31h | 16 |
| 49 | 4.1 | Final refactoring |  | 5h | 2010-02-18 14:30 | 2010-02-22 15:00 |  | 12.5d | 0d |  | Rob; Robert | 10h | 20 |
| 50 | 4.2 | **Deployment** |  | 0.25d | 2010-02-22 15:00 | 2010-02-22 16:00 | 49 | 12.5d | 0d |  |  | 1h | 16 |
| 51 | 4.2.1 | Deploy systems to production environment |  | 1h | 2010-02-22 15:00 | 2010-02-22 16:00 |  | 12.5d |  |  | Rob | 1h |  |
| 52 | 4.3 | **Documentation** |  | 1.75d | 2010-02-22 16:00 | 2010-03-01 14:30 | 50 | 12.5d | 0d |  |  | 13h | 16 |
| 53 | 4.3.1 | Finalize documentation |  | 6h | 2010-02-22 16:00 | 2010-02-25 18:00 |  | 12.5d | 0d |  | Rob; Robert | 12h | 24 |
| 54 | 4.3.2 | Compile final metrics and project statistics |  | 1h | 2010-02-25 18:00 | 2010-03-01 14:30 | 53 | 12.5d |  |  | Robert | 1h |  |
| 55 | 4.4 | Final user acceptance test |  | 1h | 2010-02-18 14:30 | 2010-02-18 15:30 |  | 16.12d |  |  | Rob; Robert | 2h |  |

| ID | WBS | Task | Type | Duration | Start | Finish | Predecessors | Total slack | Constraint | Resources | Work | Text1 |
| --- | --- | --- | --- | --- | --- | --- | --- | --- | --- | --- | --- | --- |
| 56 | 4.5 | **Final Presentation** |  | 13.12d | 2010-03-01 14:30 | 2010-04-07 08:00 | 52 | 0d |  |  | 5h | 16 |
| 57 | 4.5.1 | Create PowerPoint for final presentation |  | 2.5h | 2010-03-01 14:30 | 2010-03-03 15:00 |  | 12.5d |  | Rob; Robert | 5h | 10 |
| 58 | 4.5.2 | Present project to OC faculty and audience | milestone | 0d | 2010-04-07 08:00 | 2010-04-07 08:00 | 57 | 0d | start no earlier than 2010-04-07 08:00 | Rob; Robert |  |  |
| 59 | 4.6 | Final release | milestone | 0d | 2010-04-07 08:00 | 2010-04-07 08:00 | 56, 50, 52 | 0d | start no earlier than 2010-04-07 08:00 | Rob; Robert |  |  |
